# Projekt_Hra

Schedule from MS Project, 2022-03-03 to 2022-06-07, costs in Kč.

## Calendars

- Standardní: Mon-Fri 09:00-13:00, 14:00-18:00; Sat-Sun off.

## Resources

| Resource | Rate |
| --- | --- |
| Render engineer | 1000 |
| Scénárista | 500 |
| Programátor | 1000 |
| Level designér | 500 |
| Tester | 140 |
| Projektový manažer | 700 |
| Sound engineer | 700 |
| Marketingový specialista | 500 |
| Dabér | 800 |
| Promotér | 400 |
| Vedení herního vývoje | 1200 |
| Grafický designer | 600 |
| Nahrávací studio | 500 |
| Závozník | 150 |
| Skladník | 120 |
| Logistický manažer | 250 |

## Schedule

| ID | WBS | Task | Duration | Start | Finish | Predecessors | Total slack | Resources | Work | Cost |
| --- | --- | --- | --- | --- | --- | --- | --- | --- | --- | --- |
| 1 | 1 | **Vývoj indie videohry** | 69d | 2022-03-03 | 2022-06-07 |  | 0d |  | 2163.52h | 1,536,064 |
| 2 | 1.1 | **Plánování** | 22d | 2022-03-03 | 2022-04-01 |  | 0d |  | 300h | 259,200 |
| 3 | 1.1.1 | Schvalování typu produktu | 7d | 2022-03-03 | 2022-03-11 |  | 0d | Vedení herního vývoje [50%] | 28h | 33,600 |
| 4 | 1.1.2 | Definice koncového zákazníka | 4d | 2022-03-08 | 2022-03-11 | 3FF | 15d | Marketingový specialista; Vedení herního vývoje [50%] | 48h | 35,200 |
| 5 | 1.1.3 | Určení platforem | 14d | 2022-03-15 | 2022-04-01 | 3FS+1d | 0d | Marketingový specialista; Vedení herního vývoje | 224h | 190,400 |
| 6 | 1.2 | **Předprodukce** | 9d | 2022-04-04 | 2022-04-14 |  | 0d |  | 439.52h | 323,424 |
| 7 | 1.2.1 | Návrh příběhu | 9d | 2022-04-04 | 2022-04-14 | 2 | 0d | Scénárista [200%]; Vedení herního vývoje [33%] | 167.76h | 100,512 |
| 8 | 1.2.2 | Určení technických možností, enginu | 5d | 2022-04-05 | 2022-04-11 | 2FS+1d | 3d | Vedení herního vývoje [33%]; Render engineer; Sound engineer; Programátor | 133.2h | 123,840 |
| 9 | 1.2.3 | Návrh vizuálu | 4d | 2022-04-06 | 2022-04-11 | 2FS+2d | 3d | Vedení herního vývoje [33%]; Level designér; Programátor; Grafický designer [200%] | 138.56h | 99,072 |
| 10 | 1.3 | **Produkce** | 14d | 2022-04-19 | 2022-05-06 |  | 0d |  | 464h | 320,000 |
| 11 | 1.3.1 | Design hry | 14d | 2022-04-19 | 2022-05-06 | 6 | 0d | Level designér [200%]; Programátor [300%]; Projektový manažer [50%] | 168h | 123,200 |
| 12 | 1.3.2 | Design modelů | 6d | 2022-04-19 | 2022-04-26 | 6 | 8d | Grafický designer; Level designér; Programátor | 144h | 100,800 |
| 13 | 1.3.3 | Psaní scénáře | 10d | 2022-04-19 | 2022-05-02 | 6FS+1d | 0d | Scénárista [200%]; Projektový manažer [50%] | 80h | 48,000 |
| 14 | 1.3.4 | Dabování hry | 3d | 2022-05-04 | 2022-05-06 | 13FS+1d | 0d | Dabér; Sound engineer; Nahrávací studio | 72h | 48,000 |
| 15 | 1.4 | **Testování** | 3d | 2022-05-10 | 2022-05-12 |  | 0d |  | 48h | 6,720 |
| 16 | 1.4.1 | Testování bugů | 2d | 2022-05-10 | 2022-05-11 | 10FS+1d | 0d | Tester [200%] | 32h | 4,480 |
| 17 | 1.4.2 | Testování herního zážitku | 1d | 2022-05-12 | 2022-05-12 | 16 | 0d | Tester [200%] | 16h | 2,240 |
| 18 | 1.5 | **Pre-launch** | 7d | 2022-05-16 | 2022-05-24 |  | 0d |  | 320h | 206,400 |
| 19 | 1.5.1 | Oznámení na herním veletrhu | 1d | 2022-05-17 | 2022-05-17 | 15FS+2d | 5d | Marketingový specialista; Promotér | 16h | 7,200 |
| 20 | 1.5.2 | Propagace na sociálních sítích | 7d | 2022-05-16 | 2022-05-24 | 15FS+1d | 0d | Marketingový specialista; Promotér | 112h | 50,400 |
| 21 | 1.5.3 | Finální úpravy | 3d | 2022-05-20 | 2022-05-24 | 20FF | 0d | Level designér; Programátor; Projektový manažer; Scénárista; Vedení herního vývoje; Grafický designer; Render engineer; Sound engineer | 192h | 148,800 |
| 22 | 1.6 | **Launch** | 1d | 2022-05-26 | 2022-05-26 |  | 0d |  | 24h | 4,160 |
| 23 | 1.6.1 | Distribuce | 1d | 2022-05-26 | 2022-05-26 | 18FS+1d, 21FS+1d | 0d | Logistický manažer; Skladník [200%]; Závozník [300%] | 24h | 4,160 |
| 24 | 1.7 | **Post-launch** | 8d | 2022-05-27 | 2022-06-07 |  | 0d |  | 568h | 416,160 |
| 25 | 1.7.1 | Analýza prvotních reakcí | 2d | 2022-05-30 | 2022-05-31 | 23FS+1d | 5d | Marketingový specialista | 16h | 8,000 |
| 26 | 1.7.2 | Vydávání hotfixů/patchů | 3d | 2022-05-27 | 2022-05-31 | 23 | 0d | Programátor; Grafický designer; Level designér; Projektový manažer; Render engineer; Sound engineer; Vedení herního vývoje; Tester | 192h | 140,160 |
| 27 | 1.7.3 | Vydávání herních doplňků (DLC) | 5d | 2022-06-01 | 2022-06-07 | 26 | 0d | Marketingový specialista; Programátor; Grafický designer; Level designér; Projektový manažer; Render engineer; Scénárista; Sound engineer; Vedení herního vývoje | 360h | 268,000 |
